# Plan de proyecto final final final deveritas

Schedule from MS Project, 2020-02-03 to 2020-06-02, status date 2020-02-03, costs in $, A marks actual dates.

## Calendars

- sicloud: Mon-Fri 08:00-13:00, 14:00-17:00; Sat-Sun off.

## Resources

| Resource | Group | Rate |
| --- | --- | --- |
| Javier | Desarrollador | 15000 |
| David | Desarrollador | 15000 |
| Daniel | Desarrollador | 15000 |
| Fabian |  | 15000 |
| Alejandro |  | 15000 |
| internet |  | 100 |

## Schedule

| ID | WBS | Task | Duration | Start | Finish | Predecessors | Complete | Remaining | Total slack | Free slack | Constraint | Resources | Work | Actual work | Cost | Actual cost |
| --- | --- | --- | --- | --- | --- | --- | --- | --- | --- | --- | --- | --- | --- | --- | --- | --- |
| 1 | 1 | **Proyecto** | 86.62d | 2020-02-03 A | 2020-06-02 |  | 36% | 55.55d | 0d |  |  |  | 1430h | 509.2h | 21,450,400 | 7,638,179.85 |
| 2 | 1.1 | **Recoleccion de informacion** | 6d | 2020-02-03 A | 2020-02-10 |  | 99% | 0d | 0d |  |  | internet | 66.4h | 66.4h | 996,100 | 996,071.43 |
| 3 | 1.1.1 | Entrevista cliente | 2d | 2020-02-03 A | 2020-02-04 A |  | 100% |  |  |  | finish no earlier than 2020-02-04 | Fabian [20%]; Alejandro [20%]; Daniel [20%]; David [20%]; Javier [20%] | 16h | 16h | 240,000 | 240,000 |
| 4 | 1.1.2 | Observación | 2d | 2020-02-03 A | 2020-02-05 A |  | 100% |  |  |  | finish no earlier than 2020-02-05 | Alejandro [33%]; Daniel [33%]; David [33%]; Fabian [33%]; Javier [33%] | 26.4h | 26.4h | 396,000 | 396,000 |
| 5 | 1.1.3 | Encuesta | 3d | 2020-02-06 A | 2020-02-10 A |  | 100% |  |  |  | finish no earlier than 2020-02-07 | Alejandro [20%]; Daniel [20%]; David [20%]; Fabian [20%]; Javier [20%] | 24h | 24h | 360,000 | 360,000 |
| 6 | 1.2 | **Análisis** | 6d | 2020-02-10 A | 2020-02-17 A |  | 100% |  |  |  |  |  | 95.6h | 95.6h | 1,434,000 | 1,434,000 |
| 7 | 1.2.1 | Definición de requerientos | 2d | 2020-02-10 A | 2020-02-12 A | 5 | 100% |  |  |  |  | Alejandro [20%]; Daniel [20%]; David [20%]; Fabian [20%]; Javier [20%] | 16h | 16h | 240,000 | 240,000 |
| 8 | 1.2.2 | Planteamiento del problema | 2d | 2020-02-11 A | 2020-02-12 A | 5 | 100% |  |  |  |  | Alejandro [20%]; Daniel [20%]; David [20%]; Fabian [20%]; Javier [20%] | 16h | 16h | 240,000 | 240,000 |
| 9 | 1.2.3 | Justificación | 3d | 2020-02-11 A | 2020-02-13 A | 5 | 100% |  |  |  |  | Alejandro [20%]; Daniel [20%]; David [20%]; Fabian [20%]; Javier [20%] | 15.6h | 15.6h | 234,000 | 234,000 |
| 10 | 1.2.4 | Objetivo general y específicos | 1d | 2020-02-11 A | 2020-02-11 A | 5 | 100% |  |  |  |  | Daniel [20%]; Alejandro [20%]; David [20%]; Fabian [20%]; Javier [20%] | 8h | 8h | 120,000 | 120,000 |
| 11 | 1.2.5 | Determinar requerimientos no funcionales | 3d | 2020-02-13 A | 2020-02-17 A | 7 | 100% |  |  |  | finish no earlier than 2019-02-15 | Alejandro [20%]; Daniel [20%]; David [20%]; Fabian [20%]; Javier [20%] | 24h | 24h | 360,000 | 360,000 |
| 12 | 1.2.6 | Determinar requerimientos funcionales | 2d | 2020-02-13 A | 2020-02-17 A | 7 | 100% |  |  |  | finish no earlier than 2020-02-17 | Alejandro [20%]; Daniel [20%]; David [20%]; Fabian [20%]; Javier [20%] | 8h | 8h | 120,000 | 120,000 |
| 13 | 1.2.7 | Alcance | 1d | 2020-02-13 A | 2020-02-14 A | 5 | 100% |  |  |  |  | Alejandro [20%]; Daniel [20%]; David [20%]; Fabian [20%]; Javier [20%] | 8h | 8h | 120,000 | 120,000 |
| 14 | 1.3 | **Diseño** | 11.25d | 2020-02-17 A | 2020-03-03 A |  | 100% |  |  |  |  | internet | 296h | 296h | 4,440,100 | 4,440,100 |
| 15 | 1.3.1 | BPMN | 3d | 2020-02-17 A | 2020-02-19 A | 13 | 100% |  |  |  |  | Alejandro [20%]; Daniel [20%]; David [20%]; Fabian [20%]; Javier [20%] | 24h | 24h | 360,000 | 360,000 |
| 16 | 1.3.2 | **UML** | 8d | 2020-02-17 A | 2020-02-26 A |  | 100% |  |  |  |  |  | 200h | 200h | 3,000,000 | 3,000,000 |
| 17 | 1.3.2.1 | Diagrama de caso de uso | 5d | 2020-02-17 A | 2020-02-24 A | 12 | 100% |  |  |  |  | Alejandro [20%]; Daniel [20%]; David [20%]; Fabian [20%]; Javier [20%] | 40h | 40h | 600,000 | 600,000 |
| 18 | 1.3.2.2 | Caso de uso estendido | 5d | 2020-02-17 A | 2020-02-26 A | 17SS+2.25d | 100% |  |  |  |  | Alejandro [20%]; Daniel [20%]; David [20%]; Fabian [20%]; Javier [20%] | 40h | 40h | 600,000 | 600,000 |
| 19 | 1.3.2.3 | Modelo entidad relaicion | 5d | 2020-02-17 A | 2020-02-24 A | 12 | 100% |  |  |  |  | Alejandro [20%]; Daniel [20%]; David [20%]; Fabian [20%]; Javier [20%] | 40h | 40h | 600,000 | 600,000 |
| 20 | 1.3.2.4 | Diagrama de clases | 5d | 2020-02-17 A | 2020-02-24 A | 12 | 100% |  |  |  | start no earlier than 2019-07-27 | Alejandro [20%]; Daniel [20%]; David [20%]; Fabian [20%]; Javier [20%] | 40h | 40h | 600,000 | 600,000 |
| 21 | 1.3.2.5 | Diagrama de estado | 5d | 2020-02-17 A | 2020-02-21 A | 20SS | 100% |  |  |  | finish no earlier than 2020-02-19 | Alejandro [20%]; Daniel [20%]; Fabian [20%]; David [20%]; Javier [20%] | 40h | 40h | 600,000 | 600,000 |
| 22 | 1.3.3 | modelo relacional | 3d | 2020-02-19 A | 2020-02-28 A | 19 | 100% |  |  |  | finish no earlier than 2020-02-28 | Alejandro [20%]; Daniel [20%]; David [20%]; Fabian [20%]; Javier [20%] | 24h | 24h | 360,000 | 360,000 |
| 23 | 1.3.4 | Mockups | 6d | 2020-02-17 A | 2020-03-03 A | 20 | 100% |  |  |  | finish no earlier than 2020-02-28 | Daniel [20%]; Alejandro [20%]; David [20%]; Fabian [20%]; Javier [20%] | 48h | 48h | 720,000 | 720,000 |
| 24 | 1.4 | **Programación** | 30d | 2020-02-28 A | 2020-04-09 |  | 8% | 27.47d | 37.62d |  |  | internet | 608h | 51.2h | 9,120,100 | 768,008.42 |
| 25 | 1.4.1 | HTML | 15d | 2020-02-28 | 2020-03-19 |  |  |  | 18d | 0d | start no earlier than 2020-02-28 | Alejandro [20%]; Daniel [20%]; David [20%]; Fabian [20%]; Javier [20%] | 120h |  | 1,800,000 |  |
| 26 | 1.4.2 | Control de versiones | 16d | 2020-03-03 | 2020-03-25 | 23 |  |  | 49.38d |  | start no earlier than 2020-03-02 | Alejandro [20%]; Daniel [20%]; David [20%]; Fabian [20%]; Javier [20%] | 128h |  | 1,920,000 |  |
| 27 | 1.4.3 | DDL(Creacion de BD) DML(Insercion y consulta DB) | 8d | 2020-03-04 A | 2020-03-16 | 23 | 80% | 1.6d | 56.5d |  | start no earlier than 2020-03-04 | Alejandro [20%]; Daniel [20%]; David [20%]; Fabian [20%]; Javier [20%] | 64h | 51.2h | 960,000 | 768,000 |
| 28 | 1.4.4 | java script | 25d | 2020-03-06 | 2020-04-09 | 23 |  |  | 37.62d |  | start no earlier than 2020-03-06 | Alejandro [20%]; Daniel [20%]; David [20%]; Fabian [20%]; Javier [20%] | 200h |  | 3,000,000 |  |
| 29 | 1.4.5 | css | 12d | 2020-03-02 | 2020-03-18 | 25SS+1.12d |  |  | 18d |  | start no earlier than 2020-02-28 | Alejandro [20%]; Daniel [20%]; David [20%]; Fabian [20%]; Javier [20%] | 96h |  | 1,440,000 |  |

| ID | WBS | Task | Duration | Start | Finish | Predecessors | Total slack | Constraint | Resources | Work | Cost |
| --- | --- | --- | --- | --- | --- | --- | --- | --- | --- | --- | --- |
| 30 | 1.5 | **Implementación** | 26.5d | 2020-04-13 | 2020-05-19 |  | 0d | start no earlier than 2020-04-13 | internet | 212h | 3,180,100 |
| 31 | 1.5.1 | Definicion de tecnologias | 4d | 2020-04-13 | 2020-04-17 | 29 | 0d | start no earlier than 2020-03-30 | Alejandro [20%]; Daniel [20%]; David [20%]; Fabian [20%]; Javier [20%] | 32h | 480,000 |
| 32 | 1.5.2 | prototipo | 22.5d | 2020-04-17 | 2020-05-19 | 31 | 0d |  | Alejandro [20%]; Daniel [20%]; David [20%]; Fabian [20%]; Javier [20%] | 180h | 2,700,000 |
| 33 | 1.6 | **Uso y mantenimiento** | 10d | 2020-05-19 | 2020-06-02 |  | 0d |  |  | 152h | 2,280,000 |
| 34 | 1.6.1 | Diseño de manuales | 10d | 2020-05-19 | 2020-06-02 | 32 | 0d |  | Alejandro [20%]; Daniel [20%]; David [20%]; Fabian [20%]; Javier [20%] | 80h | 1,200,000 |
| 35 | 1.6.2 | instalación | 6d | 2020-05-19 | 2020-05-27 | 32 | 4d |  | Alejandro [20%]; Daniel [20%]; David [20%]; Fabian [20%]; Javier [20%] | 48h | 720,000 |
| 36 | 1.6.3 | pruebas funcionales | 3d | 2020-05-19 | 2020-05-22 | 32 | 7d |  | Alejandro [20%]; Daniel [20%]; David [20%]; Fabian [20%]; Javier [20%] | 24h | 360,000 |
